# ITSM&G2A合并

Schedule from MS Project, 2016-11-17 to 2017-01-19, A marks actual dates.
Microsoft

## Calendars

- 标准: Mon-Fri 08:00-12:00, 13:00-17:00; Sat-Sun off.

## Resources

| Resource |
| --- |
| William |
| Roy |
| Stanley |
| Michael |
| Allon |
| Lynn |
| Surey |
| Damon |
| ？ |
| 待定开发人员1 |
| VM开发人员 |
| 访客端开发人员 |
| 待定开发人员 |
| 测试人员1 |
| 测试人员2 |
| 测试人员3 |
| Jason |

## Schedule

| ID | WBS | Task | Type | Duration | Start | Finish | Complete | Remaining | Actual start | Total slack | Resources | Work | Actual work |
| --- | --- | --- | --- | --- | --- | --- | --- | --- | --- | --- | --- | --- | --- |
| 1 | 1 | **开发** |  | 46d? | 2016-11-17 A | 2017-01-19 | 49% | 23.57d? |  | 0d | Michael | 1647.2h | 733.6h |
| 2 | 1.1 | **代码合并** |  | 15d | 2016-11-28 A | 2016-12-16 A | 100% |  |  |  |  | 456h | 456h |
| 3 | 1.1.1 | ITSM | manual | 5d | 2016-11-28 A | 2016-12-02 A | 100% |  |  |  | William; Roy; Stanley; Michael | 160h | 160h |
| 4 | 1.1.2 | G2A | manual | 7d | 2016-12-05 A | 2016-12-13 A | 100% |  |  |  | Michael; Roy; Allon; Lynn | 224h | 224h |
| 5 | 1.1.3 | Veridian，Bupa，Garena | manual | 3d | 2016-12-14 A | 2016-12-16 A | 100% |  |  |  | Surey; Stanley; Michael | 72h | 72h |
| 6 | 1.2 | **需求** |  | 5d | 2016-12-19 A | 2016-12-23 A | 100% |  |  |  |  | 72h | 72h |
| 7 | 1.2.1 | 需求细化&评审 | manual | 4d | 2016-12-19 A | 2016-12-22 A | 100% |  |  |  | Michael; Damon | 64h | 64h |
| 8 | 1.2.2 | 评审问题修改&重新梳理计划 | manual | 1d | 2016-12-23 A | 2016-12-23 A | 100% |  |  |  | Michael | 8h | 8h |
| 9 | 1.3 | **设计** |  | 3d | 2016-12-23 A | 2016-12-27 | 95% | 0.15d |  | 0d |  | 43.2h | 38.4h |
| 10 | 1.3.1 | Monitor All Chats & Monitor My Departments’ Chats | manual | 1d | 2016-12-26 A | 2016-12-26 A | 100% |  |  |  | Jason [30%] | 2.4h | 2.4h |
| 11 | 1.3.2 | Customize the transcript email subject | manual | 1d | 2016-12-26 A | 2016-12-26 A | 100% |  |  |  | Damon [50%]; Michael [50%] | 8h | 8h |
| 12 | 1.3.3 | 三库合并&Server Linker | manual | 1d | 2016-12-26 A | 2016-12-26 A | 100% |  |  |  | Jason [40%] | 3.2h | 3.2h |
| 13 | 1.3.4 | 全文索引的研究及设计 | manual | 1d | 2016-12-27 A | 2016-12-27 | 50% | 0.5d |  |  | Jason [70%]; Michael [50%] | 9.6h | 4.8h |
| 14 | 1.3.5 | Wrap-up 报表 | manual | 1d | 2016-12-23 A | 2016-12-23 A | 100% |  |  |  | Damon [50%] | 4h | 4h |
| 15 | 1.3.6 | Operators--performances | manual | 1d | 2016-12-23 A | 2016-12-23 A | 100% |  |  |  | Damon [50%] | 4h | 4h |
| 16 | 1.3.7 | Custom variables displayed in offline messages | milestone, manual | 0d | 2016-12-26 A | 2016-12-26 A | 100% |  |  |  | Michael [50%]; Jason [30%] |  |  |
| 17 | 1.3.8 | Maximum On 优化 | manual | 1d | 2016-12-27 A | 2016-12-27 A | 100% |  |  |  | Michael [50%] | 4h | 4h |
| 18 | 1.3.9 | Leave Chat after transfer | manual | 1d | 2016-12-26 A | 2016-12-26 A | 100% |  |  |  | Roy [30%] | 2.4h | 2.4h |
| 19 | 1.3.10 | History导出文件后Dashboard报错 | manual | 1d | 2016-12-26 A | 2016-12-26 A | 100% |  |  |  | Roy [40%] | 3.2h | 3.2h |
| 20 | 1.3.11 | 免费用户收到没有消息的提示音 | manual | 1d | 2016-12-26 A | 2016-12-26 A | 100% |  |  |  | Roy [30%] | 2.4h | 2.4h |
| 21 | 1.4 | **编码** |  | 45d? | 2016-11-17 A | 2017-01-18 | 31% | 31.17d? |  | 0d |  | 548h | 167.2h |
| 22 | 1.4.1 | **ITSM需求** |  | 11d | 2016-12-28 A | 2017-01-11 | 89% | 1.22d |  | 0d |  | 68h | 61.6h |
| 23 | 1.4.1.1 | Report 代码合并 | manual | 1d | 2016-12-28 A | 2016-12-28 A | 100% |  |  |  | Jason; Damon | 16h | 16h |
| 24 | 1.4.1.2 | **Monitor All Chats & Monitor My Departments’ Chats** |  | 7d | 2017-01-03 | 2017-01-11 A | 100% |  | 2017-01-05 |  |  | 32h | 32h |
| 25 | 1.4.1.2.1 | Account部分 | manual | 1d | 2017-01-05 A | 2017-01-05 A | 100% |  |  |  | Jason [50%] | 4h | 4h |
| 26 | 1.4.1.2.2 | ChatServer | manual | 1d | 2017-01-05 A | 2017-01-05 A | 100% |  |  |  | Michael [50%] | 4h | 4h |
| 27 | 1.4.1.2.3 | VM部分 | manual | 3d | 2017-01-09 A | 2017-01-11 A | 100% |  |  |  | Roy | 24h | 24h |

Notes:
- 13: 方案待研究

| ID | WBS | Task | Type | Duration | Start | Finish | Complete | Remaining | Actual start | Total slack | Resources | Work | Actual work |
| --- | --- | --- | --- | --- | --- | --- | --- | --- | --- | --- | --- | --- | --- |
| 28 | 1.4.1.3 | **Custom variables displayed in offline messages** |  | 2d | 2017-01-03 A | 2017-01-04 | 67% | 0.67d |  | 0d |  | 20h | 13.6h |
| 29 | 1.4.1.3.1 | Portal | manual | 2d | 2017-01-03 A | 2017-01-04 | 70% | 0.6d |  |  | Jason | 16h | 11.2h |
| 30 | 1.4.1.3.2 | ChatServer | manual | 1d | 2017-01-03 A | 2017-01-03 | 60% | 0.4d |  |  | Michael [50%] | 4h | 2.4h |
| 31 | 1.4.2 | Show department and operator | manual | 3d | 2017-01-09 | 2017-01-11 |  |  |  |  | Roy | 24h |  |
| 32 | 1.4.3 | 三库合并&Server Linker | manual | 2d | 2017-01-07 A | 2017-01-09 | 80% | 0.4d |  |  | Jason | 16h | 12.8h |
| 33 | 1.4.4 | bug2,3,4 修复 | manual | 2d | 2017-01-09 A | 2017-01-10 | 40% | 1.2d |  |  | Jason | 16h | 6.4h |
| 34 | 1.4.5 | 全文索引部分改动 | manual | 2d | 2017-01-17 | 2017-01-18 |  |  |  |  | Jason | 16h |  |
| 35 | 1.4.6 | Operators--performances | manual | 2d | 2016-12-26 A | 2016-12-27 A | 100% |  |  |  | Damon | 16h | 16h |
| 36 | 1.4.7 | Wrap-up 报表(UI) | manual | 1d | 2017-01-03 A | 2017-01-03 A | 100% |  |  |  | Damon | 8h | 8h |
| 37 | 1.4.8 | Wrap-up 报表(后台逻辑) +性能优化 | manual | 3d | 2017-01-09 A | 2017-01-11 | 40% | 1.8d |  |  | Damon | 24h | 9.6h |
| 38 | 1.4.9 | **Customize the transcript email subject** |  | 8d | 2017-01-09 | 2017-01-18 | 17% | 6.67d | 2017-01-17 |  | Damon | 88h | 4h |
| 39 | 1.4.9.1 | Portal | manual | 2d | 2017-01-17 | 2017-01-18 |  |  |  |  | Damon | 16h |  |
| 40 | 1.4.9.2 | ChatServer | manual | 1d | 2017-01-17 A | 2017-01-17 | 50% | 0.5d |  |  | Michael | 8h | 4h |
| 41 | 1.4.10 | Route Server 默认不同步 | manual | 1d | 2016-11-17 | 2016-11-17 |  |  |  |  | Jason | 8h |  |
| 42 | 1.4.11 | Maximum On 优化 | manual | 3d | 2017-01-10 | 2017-01-12 |  |  |  |  | Michael | 24h |  |
| 43 | 1.4.12 | 访客端性能优化（1） | manual | 1d | 2016-12-27 A | 2016-12-27 A | 100% |  |  |  | Roy | 8h | 8h |
| 44 | 1.4.13 | 访客端性能优化（2） | manual | 2d | 2017-01-03 A | 2017-01-04 A | 100% |  |  |  | Roy | 16h | 16h |
| 45 | 1.4.14 | 除bug以外的其它VM功能 | manual | 3d | 2017-01-09 A | 2017-01-11 | 50% | 1.5d |  |  | Roy | 24h | 12h |
| 46 | 1.4.15 | 剩余bug修复（包括XSS) | manual | 2d | 2017-01-07 A | 2017-01-09 | 80% | 0.4d |  |  | Roy | 16h | 12.8h |
| 47 | 1.4.16 | 新的混淆工具研究 | manual | 2d | 2017-01-17 | 2017-01-18 |  |  |  |  | Roy | 16h |  |
| 48 | 1.4.17 | 不宕机升级 | manual | 1d | 2016-11-17 | 2016-11-17 |  |  |  |  | Michael | 8h |  |
| 49 | 1.4.18 | Salesforce 未显示账号信息 | manual | 1d | 2016-11-18 | 2016-11-18 |  |  |  |  | Michael | 8h |  |
| 50 | 1.4.19 | **Leave Chat after transfer** |  | 4d | 2017-01-09 | 2017-01-12 |  |  |  |  | Roy | 72h |  |
| 51 | 1.4.19.1 | VM部分 | manual | 3d | 2017-01-09 | 2017-01-11 |  |  |  |  | Roy | 24h |  |
| 52 | 1.4.19.2 | ChatServer | manual | 2d | 2017-01-11 | 2017-01-12 |  |  |  |  | Michael | 16h |  |
| 53 | 1.4.20 | register &脚本整理 | manual | 5d | 2017-01-09 | 2017-01-13 |  |  |  |  | Michael | 40h |  |
| 54 | 1.4.21 | 同步回迁 | manual | 2d | 2017-01-10 | 2017-01-11 |  |  |  |  | Roy | 16h |  |
| 55 | 1.4.22 | Report项目遗留bug | manual | 2d | 2017-01-14 | 2017-01-16 |  |  |  |  | Damon | 16h |  |

Notes:
- 30: 合并版本的已经写完, bet-at-home 要单独写一个版本
- 33: 4，需讨论
- 53: 9号先整理，13号正式定版
- 54: 人员待定
- 55: 时间和人员待定

| ID | WBS | Task | Type | Duration | Start | Finish | Total slack | Resources | Work |
| --- | --- | --- | --- | --- | --- | --- | --- | --- | --- |
| 56 | 1.4.23 | **bug修复** |  | 1d? | 2016-11-28 | 2016-11-28 | 0d |  |  |
| 57 | 1.4.23.1 | 1.salesforce 未显示账号信息 | manual | 1d? | 2016-11-28 | 2016-11-28 |  |  |  |
| 58 | 1.4.23.2 | 2.View Navigations 权限选项显示错误 | manual | 1d? | 2016-11-28 | 2016-11-28 |  |  |  |
| 59 | 1.4.23.3 | 3.operators授权页面异常问题 | manual | 1d? | 2016-11-28 | 2016-11-28 |  |  |  |
| 60 | 1.4.23.4 | 4.ticket 系统无法自动创建Note | manual | 1d? | 2016-11-28 | 2016-11-28 |  |  |  |
| 61 | 1.4.23.5 | 5.XSS 注入问题 | manual | 1d? | 2016-11-28 | 2016-11-28 |  |  |  |
| 62 | 1.4.23.6 | 6.History导出文件后Dashboard报错 | manual | 1d? | 2016-11-28 | 2016-11-28 |  |  |  |
| 63 | 1.4.23.7 | 7.聊天transfer 的bug | manual | 1d? | 2016-11-28 | 2016-11-28 |  |  |  |
| 64 | 1.4.23.8 | 8.免费用户收到没有消息的提示音 | manual | 1d? | 2016-11-28 | 2016-11-28 |  |  |  |
| 65 | 1.4.23.9 | 9.Bug of the end chat Automatically | manual | 1d? | 2016-11-28 | 2016-11-28 |  |  |  |
| 66 | 1.4.23.10 | 10.Garena新访客custom variable没有填到prechat的bug | manual | 1d? | 2016-11-28 | 2016-11-28 |  |  |  |
| 67 | 1.4.23.11 | 11.没有模拟手机， 桌面的Chrome浏览器出现了移动端的邀请 | manual | 1d? | 2016-11-28 | 2016-11-28 |  |  |  |
| 68 | 1.4.23.12 | 12.VM canned message替换宏 | manual | 1d? | 2016-11-28 | 2016-11-28 |  |  |  |
| 69 | 1.5 | **Code Review &代码自测** |  | 6d | 2017-01-12 | 2017-01-19 | 0d |  | 160h |
| 70 | 1.5.1 | 第一轮 | manual | 2d | 2017-01-12 | 2017-01-13 |  | Damon; Jason; Michael; Roy | 64h |
| 71 | 1.5.2 | 第二轮 | manual | 1d | 2017-01-19 | 2017-01-19 |  | Damon; Jason; Michael; Roy | 32h |
| 72 | 1.5.3 | 冒烟测试问题修复 | manual | 2d | 2017-01-14 | 2017-01-16 |  | Damon; Jason; Michael; Roy | 64h |
| 81 | 2 | ßß | manual | 1d? | 2016-11-28 | 2016-11-28 |  |  |  |
